# P1

Schedule from MS Project, 2024-02-06 to 2025-04-11, costs in ₽.

## Calendars

- Стандартный: Mon-Fri 09:00-13:00, 14:00-18:00; Sat-Sun off. Exceptions (off unless hours are given): 2024-03-08 (День женщин), 2024-05-01 (День труда), 2024-05-09 (День победы), 2024-05-14 (Радоница).

## Resources

| Resource | Unit | Rate | Cost per use |
| --- | --- | --- | --- |
| Архитектор |  |  | 550000 |
| МУП "Горгаз" |  |  | 700000 |
| МУП "Водоканал" |  |  | 500000 |
| АО "Водолей" |  |  | 500000 |
| Рабочий1 |  | 1250 |  |
| Рабочий2 |  | 1250 |  |
| Рабочий3 |  | 1250 |  |
| Подсобник1 |  | 500 |  |
| Подсобник2 |  | 500 |  |
| Трактор |  |  | 70000 |
| Плотник1 |  | 18750 | 75000 |
| Плотник2 |  | 18750 |  |
| АО "Неопласт" |  |  | 1200000 |
| Водопроводчик1 |  | 1000 |  |
| Водопроводчик2 |  | 1000 |  |
| Электрик |  | 1250 |  |
| АО "Газовик" |  |  | 250000 |
| ООО "Потолки" |  |  | 1500000 |
| Песок | т | 5000 |  |
| Щебень | т | 6000 |  |
| Цемент | кг | 780000 |  |
| Кирпич | шт | 70 |  |
| Брус |  |  | 250000 |
| Доска обрезная | м^3 | 70000 |  |
| Доска необрезная | м^3 | 50000 |  |
| Шифер |  |  | 400000 |
| Электропровод |  |  | 150000 |
| Электросчетчик |  |  | 50000 |
| Труба водопроводная |  |  | 350000 |
| Труба канализационная |  |  | 300000 |
| Штукатурка |  |  | 1500000 |
| Потолок | м^2 | 1500 |  |
| Окно |  | 100000 |  |
| Дверь наружняя |  |  | 200000 |
| Труба отопительная |  |  | 200000 |
| Котел |  |  | 400000 |
| Печь газовая |  |  | 200000 |
| Ванна |  | 450000 |  |
| Унитаз компакт |  | 200000 |  |
| Раковина |  | 160000 |  |
| Кран |  | 70000 |  |
| Паркет | м^2 | 5500 |  |
| Труба газовая |  |  | 500000 |
| Дверь внутренняя |  | 90000 |  |
| Доставка |  |  |  |

## Schedule

| ID | WBS | Task | Type | Duration | Start | Finish | Predecessors | Total slack | Resources | Work | Cost |
| --- | --- | --- | --- | --- | --- | --- | --- | --- | --- | --- | --- |
| 1 | 1 | Начало проекта | milestone | 0d | 2024-02-06 | 2024-02-06 |  | 0d |  |  |  |
| 2 | 2 | **Утверждение проектов** |  | 101d | 2024-02-06 | 2024-07-01 |  | 0d |  | 1800h | 2,250,000 |
| 3 | 2.1 | Начало утверждения проектов |  | 1d | 2024-02-06 | 2024-02-06 | 1 | 0d |  |  |  |
| 4 | 2.2 | Утверждение проекта на строительство |  | 90d | 2024-02-07 | 2024-06-17 | 3 | 10d | Архитектор | 720h | 550,000 |
| 5 | 2.3 | Утверждение проекта на газ |  | 100d | 2024-02-07 | 2024-07-01 | 3 | 0d | МУП "Горгаз" | 480h | 700,000 |
| 6 | 2.4 | Утверждение проекта на водопровод и канализацию |  | 60d | 2024-02-07 | 2024-05-02 | 3 | 40d | МУП "Водоканал" | 240h | 500,000 |
| 7 | 2.5 | Утверждение проекта на отопление |  | 90d | 2024-02-07 | 2024-06-17 | 3 | 10d | АО "Водолей" | 360h | 500,000 |
| 8 | 2.6 | Проекты утверждены | milestone | 0d | 2024-07-01 | 2024-07-01 | 4, 5, 6, 7 | 0d |  |  |  |
| 9 | 3 | **Строительство фундамента** |  | 47d | 2024-07-02 | 2024-09-04 |  | 0d |  | 680h | 1,954,091,000 |
| 10 | 3.1 | Начало закладки фундамента |  | 2d | 2024-07-02 | 2024-07-03 | 8 | 0d |  |  |  |
| 11 | 3.2 | Рытье траншей |  | 10d | 2024-07-04 | 2024-07-17 | 10 | 0d | Рабочий1; Рабочий2; Рабочий3; Плотник1; Плотник2; Трактор | 480h | 3,445,000 |
| 12 | 3.3 | Заливка фундамента |  | 5d | 2024-08-29 | 2024-09-04 | 11FS+30d | 0d | Рабочий1; Рабочий2; Рабочий3; Подсобник1; Подсобник2; Песок [10 т]; Щебень [1 т]; Цемент [2500 кг]; Доска необрезная [3 м^3]; Доставка [0.1%] | 200h | 1,950,646,000 |
| 13 | 3.4 | Фундамент завершен | milestone | 0d | 2024-09-04 | 2024-09-04 | 12 | 0d |  |  |  |
| 14 | 4 | **Каркас и крыша** |  | 106d | 2024-09-05 | 2025-01-30 |  | 0d |  | 3616h | 1,575,185,000 |
| 15 | 4.1 | Начало каркаса |  | 1d | 2024-09-05 | 2024-09-05 | 13 | 0d |  |  |  |
| 16 | 4.2 | Кладка стен |  | 60d | 2024-09-06 | 2024-11-28 | 15 | 0d | Рабочий1; Рабочий2; Рабочий3; Подсобник1; Подсобник2; Кирпич [70000 шт]; Песок [6 т]; Цемент [2000 кг]; Доставка [0.1%] | 2400h | 1,567,460,000 |
| 17 | 4.3 | Перекрытие стен |  | 15d | 2024-11-29 | 2024-12-19 | 16 | 0d | Рабочий1; Рабочий2; Рабочий3; Подсобник1; Подсобник2; Брус [1500%]; Доска обрезная [7 м^3]; Доставка [0.1%] | 600h | 1,460,000 |
| 18 | 4.4 | Установка крыши |  | 30d | 2024-12-20 | 2025-01-30 | 17 | 0d | Доска необрезная [10 м^3]; Шифер [2000%]; Доставка [0.1%]; Рабочий1; Рабочий2 | 480h | 1,620,000 |
| 19 | 4.5 | Установка наружных дверей и окон |  | 7d | 2024-12-20 | 2024-12-30 | 17 | 23d | АО "Неопласт"; Окно [900%]; Дверь наружняя | 56h | 2,300,000 |
| 20 | 4.6 | Установка полов |  | 5d | 2024-12-20 | 2024-12-26 | 17 | 25d | Плотник1; Плотник2; Доска обрезная [10 м^3]; Доставка [0.1%] | 80h | 2,345,000 |
| 21 | 4.7 | Каркас готов | milestone | 0d | 2025-01-30 | 2025-01-30 | 18, 19, 20 | 0d |  |  |  |
| 22 | 5 | **Коммуникации** |  | 11d | 2025-01-31 | 2025-02-14 |  | 0d |  | 240h | 1,810,000 |
| 23 | 5.1 | Начало установки коммуникаций |  | 1d | 2025-01-31 | 2025-01-31 | 21 | 0d |  |  |  |
| 24 | 5.2 | Проведение и подключение водопровода и канализации |  | 10d | 2025-02-03 | 2025-02-14 | 23 | 0d | Водопроводчик1; Водопроводчик2; Труба канализационная; Труба водопроводная | 160h | 810,000 |
| 25 | 5.3 | Установка и подключение электропроводки |  | 5d | 2025-02-03 | 2025-02-07 | 23 | 5d | Электрик; Электропровод [10000%]; Электросчетчик | 40h | 250,000 |
| 26 | 5.4 | Установка и подключение газовых коммуникаций |  | 5d | 2025-02-03 | 2025-02-07 | 23 | 5d | АО "Газовик"; Труба газовая | 40h | 750,000 |
| 27 | 5.5 | Коммуникации готовы | milestone | 0d | 2025-02-14 | 2025-02-14 | 24, 25, 26 | 0d |  |  |  |

| ID | WBS | Task | Type | Duration | Start | Finish | Predecessors | Total slack | Constraint | Resources | Work | Cost |
| --- | --- | --- | --- | --- | --- | --- | --- | --- | --- | --- | --- | --- |
| 28 | 6 | **Внутренняя отделка** |  | 40d | 2025-02-14 | 2025-04-11 |  | 0d |  |  | 1160h | 11,880,000 |
| 29 | 6.1 | Начало отделки | milestone | 0d | 2025-02-14 | 2025-02-14 | 27 | 0d |  |  |  |  |
| 30 | 6.2 | Внутренние двери |  | 10d | 2025-02-17 | 2025-02-28 | 29 | 0d |  | Плотник1; Плотник2; Дверь внутренняя; Доставка [0.1%] | 160h | 3,265,000 |
| 31 | 6.3 | Навесные потолки |  | 5d | 2025-03-03 | 2025-03-07 | 30 | 5d |  | ООО "Потолки"; Потолок [190 м^2] | 40h | 1,785,000 |
| 32 | 6.4 | Отделка стен |  | 3d | 2025-03-19 | 2025-03-21 | 30 | 0d | as late as possible | Рабочий1; Рабочий2; Рабочий3; Плотник1; Плотник2; Штукатурка [10000%] | 120h | 2,565,000 |
| 33 | 6.5 | Монтаж отопления |  | 10d | 2025-03-03 | 2025-03-14 | 30 | 0d |  | Водопроводчик1; Водопроводчик2; Труба отопительная | 160h | 360,000 |
| 34 | 6.6 | Установка оборудования, приборов, сантехники |  | 5d | 2025-03-17 | 2025-03-21 | 31, 33 | 0d |  | Водопроводчик1; Водопроводчик2; Котел; Печь газовая; Ванна; Унитаз компакт [200%]; Раковина [300%]; Кран [400%] | 80h | 2,290,000 |
| 35 | 6.7 | Настил полов |  | 15d | 2025-03-24 | 2025-04-11 | 32, 34 | 0d |  | Рабочий1; Рабочий2; Рабочий3; Подсобник1; Подсобник2; Паркет [190 м^2] | 600h | 1,615,000 |
| 36 | 6.8 | Конец отделки | milestone | 0d | 2025-04-11 | 2025-04-11 | 35 | 0d |  |  |  |  |
| 37 | 6.9 | Конец проекта | milestone | 0d | 2025-04-11 | 2025-04-11 | 36 | 0d |  |  |  |  |
